# Northbridge Digital Banking Platform Upgrade

Schedule from MS Project, 2026-01-05 to 2026-11-25.
Northbridge Financial Group

## Calendars

- Standard: Mon-Fri 08:00-12:00, 13:00-17:00; Sat-Sun off.

## Resources

| Resource |
| --- |
| Project Control Officer |
| SI Partner - Meridian |
| Solution Architect |
| Business Owner |
| IT Delivery Lead |
| Test Lead |
| Contractor Team |

## Schedule

| ID | WBS | Task | Type | Duration | Start | Finish | Predecessors | Baseline start | Baseline finish | Baseline duration | Total slack | Free slack | Resources | Work |
| --- | --- | --- | --- | --- | --- | --- | --- | --- | --- | --- | --- | --- | --- | --- |
| 1 | 1 | **NORTHBRIDGE DIGITAL BANKING PLATFORM UPGRADE** |  | 233d | 2026-01-05 | 2026-11-25 |  | 2026-01-05 | 2026-11-26 | 326d | 0d |  |  | 2128h |
| 2 | 1.1 | **1. Initiation** |  | 11d | 2026-01-05 | 2026-01-19 |  | 2026-01-05 | 2026-01-19 | 15d | 0d |  |  | 88h |
| 3 | 1.1.1 | 1.1 Business case approved |  | 3d | 2026-01-05 | 2026-01-07 |  | 2026-01-05 | 2026-01-07 | 3d | 0d |  | Project Control Officer | 24h |
| 4 | 1.1.2 | 1.2 Project charter drafted & signed |  | 5d | 2026-01-08 | 2026-01-14 | 3 | 2026-01-08 | 2026-01-14 | 5d | 0d |  | Project Control Officer | 40h |
| 5 | 1.1.3 | 1.3 Stakeholder register & governance cadence |  | 3d | 2026-01-15 | 2026-01-19 | 4 | 2026-01-15 | 2026-01-19 | 3d | 222d |  | Project Control Officer | 24h |
| 6 | 1.1.4 | 1.4 MILESTONE: Project approved & funded | milestone | 0d | 2026-01-14 | 2026-01-14 | 4 | 2026-01-15 | 2026-01-15 | 0d | 0d |  |  |  |
| 7 | 1.2 | **2. Design** |  | 40d | 2026-01-15 | 2026-03-11 |  | 2026-01-15 | 2026-03-12 | 57d | 0d |  |  | 320h |
| 8 | 1.2.1 | 2.1 Requirements workshops |  | 15d | 2026-01-15 | 2026-02-04 | 6 | 2026-01-15 | 2026-02-04 | 15d | 0d |  | Solution Architect | 120h |
| 9 | 1.2.2 | 2.2 Solution & integration design |  | 20d | 2026-02-05 | 2026-03-04 | 8 | 2026-02-05 | 2026-03-04 | 20d | 0d |  | Solution Architect | 160h |
| 10 | 1.2.3 | 2.3 Design sign-off by business owner |  | 5d | 2026-03-05 | 2026-03-11 | 9 | 2026-03-05 | 2026-03-11 | 5d | 0d |  | Business Owner | 40h |
| 11 | 1.2.4 | 2.4 MILESTONE: Design baselined | milestone | 0d | 2026-03-11 | 2026-03-11 | 10 | 2026-03-12 | 2026-03-12 | 0d | 0d |  |  |  |
| 12 | 1.3 | **3. Build & Data Migration** |  | 85d | 2026-03-12 | 2026-07-08 |  | 2026-03-12 | 2026-07-09 | 120d | 0d |  |  | 920h |
| 13 | 1.3.1 | 3.1 Environment provisioning (Dev/Test) |  | 10d | 2026-03-12 | 2026-03-25 | 11 | 2026-03-12 | 2026-03-25 | 10d | 0d |  | IT Delivery Lead | 80h |
| 14 | 1.3.2 | 3.2 Core platform configuration |  | 40d | 2026-03-26 | 2026-05-20 | 13 | 2026-03-26 | 2026-05-20 | 40d | 0d |  | SI Partner - Meridian | 320h |
| 15 | 1.3.3 | 3.3 Vendor master & AP data migration |  | 20d | 2026-03-26 | 2026-04-22 | 13 | 2026-03-26 | 2026-04-22 | 20d | 145d | 0d | Contractor Team | 160h |
| 16 | 1.3.4 | 3.4 GL opening balance load & reconciliation |  | 10d | 2026-04-23 | 2026-05-06 | 15 | 2026-04-23 | 2026-05-06 | 10d | 145d |  | Contractor Team | 80h |
| 17 | 1.3.5 | 3.5 Integration build (payments, core, reporting) |  | 35d | 2026-05-21 | 2026-07-08 | 14 | 2026-05-21 | 2026-07-08 | 35d | 0d |  | SI Partner - Meridian | 280h |
| 18 | 1.3.6 | 3.6 MILESTONE: Build complete | milestone | 0d | 2026-07-08 | 2026-07-08 | 17 | 2026-07-09 | 2026-07-09 | 0d | 0d |  |  |  |
| 19 | 1.4 | **4. Test & UAT** |  | 70d | 2026-07-09 | 2026-10-14 |  | 2026-07-09 | 2026-10-15 | 99d | 0d |  |  | 560h |
| 20 | 1.4.1 | 4.1 System & integration testing (SIT) |  | 20d | 2026-07-09 | 2026-08-05 | 18 | 2026-07-09 | 2026-08-05 | 20d | 0d |  | Test Lead | 160h |
| 21 | 1.4.2 | 4.2 UAT preparation & test case sign-off |  | 10d | 2026-08-06 | 2026-08-19 | 20 | 2026-08-06 | 2026-08-19 | 10d | 0d |  | Test Lead | 80h |
| 22 | 1.4.3 | 4.3 User acceptance testing (UAT) |  | 25d | 2026-08-20 | 2026-09-23 | 21 | 2026-08-20 | 2026-09-23 | 25d | 0d |  | Business Owner | 200h |
| 23 | 1.4.4 | 4.4 Defect remediation |  | 15d | 2026-09-24 | 2026-10-14 | 22 | 2026-09-24 | 2026-10-14 | 15d | 0d |  | SI Partner - Meridian | 120h |
| 24 | 1.4.5 | 4.5 MILESTONE: UAT signed off | milestone | 0d | 2026-10-14 | 2026-10-14 | 23 | 2026-10-15 | 2026-10-15 | 0d | 0d |  |  |  |

| ID | WBS | Task | Type | Duration | Start | Finish | Predecessors | Baseline start | Baseline finish | Baseline duration | Total slack | Resources | Work |
| --- | --- | --- | --- | --- | --- | --- | --- | --- | --- | --- | --- | --- | --- |
| 25 | 1.5 | **5. Deploy & Cutover** |  | 15d | 2026-10-15 | 2026-11-04 |  | 2026-10-15 | 2026-11-05 | 22d | 0d |  | 120h |
| 26 | 1.5.1 | 5.1 Cutover runbook & rehearsal |  | 10d | 2026-10-15 | 2026-10-28 | 24 | 2026-10-15 | 2026-10-28 | 10d | 0d | Project Control Officer | 80h |
| 27 | 1.5.2 | 5.2 Go/No-Go decision |  | 2d | 2026-10-29 | 2026-10-30 | 26 | 2026-10-29 | 2026-10-30 | 2d | 0d | Project Control Officer | 16h |
| 28 | 1.5.3 | 5.3 Production cutover |  | 3d | 2026-11-02 | 2026-11-04 | 27 | 2026-11-02 | 2026-11-04 | 3d | 0d | IT Delivery Lead | 24h |
| 29 | 1.5.4 | 5.4 MILESTONE: GO-LIVE | milestone | 0d | 2026-11-04 | 2026-11-04 | 28 | 2026-11-05 | 2026-11-05 | 0d | 0d |  |  |
| 30 | 1.6 | **6. Hypercare & Close** |  | 15d | 2026-11-05 | 2026-11-25 |  | 2026-11-05 | 2026-11-26 | 22d | 0d |  | 120h |
| 31 | 1.6.1 | 6.1 Hypercare support (2 weeks) |  | 10d | 2026-11-05 | 2026-11-18 | 29 | 2026-11-05 | 2026-11-18 | 10d | 0d | IT Delivery Lead | 80h |
| 32 | 1.6.2 | 6.2 Benefits review & lessons learned |  | 5d | 2026-11-19 | 2026-11-25 | 31 | 2026-11-19 | 2026-11-25 | 5d | 0d | Project Control Officer | 40h |
| 33 | 1.6.3 | 6.3 MILESTONE: Project closed | milestone | 0d | 2026-11-25 | 2026-11-25 | 32 | 2026-11-26 | 2026-11-26 | 0d | 0d |  |  |
